Schedule from MS Project, 2021-05-21 to 2021-10-31, A marks actual dates.
Microsoft

## Calendars

- 标准: Mon-Fri 08:00-12:00, 13:00-17:00; Sat-Sun off.

## Resources

| Resource |
| --- |
| 协议文档 |
| 客户需求文档 |
| 文档 |
| 平台选型确定 |
| 原理图 |
| 板子 |
| 网关 |
| 相关说明 |
| 其他工具 |

## Schedule

| ID | WBS | Task | Type | Duration | Start | Finish | Predecessors | Complete | Remaining | Total slack | Free slack | Constraint | Resources | Work | Actual work |
| --- | --- | --- | --- | --- | --- | --- | --- | --- | --- | --- | --- | --- | --- | --- | --- |
| 1 | 1 | Lora无线温度传感器嵌入式软件开发计划 | manual | 117d | 2021-05-21 | 2021-10-31 |  |  |  |  |  |  |  |  |  |
| 2 | 2 | **需求分析** |  | 3d | 2021-05-21 A | 2021-05-26 A |  | 100% |  |  |  |  |  | 24h | 24h |
| 3 | 2.1 | 需求整理 | manual | 2d | 2021-05-21 A | 2021-05-25 A |  | 100% |  |  |  |  | 客户需求文档 | 16h | 16h |
| 4 | 2.2 | 需求确认 |  | 1d | 2021-05-25 A | 2021-05-26 A | 3 | 100% |  |  |  |  | 文档 | 8h | 8h |
| 5 | 3 | **系统设计** |  | 22d | 2021-05-26 A | 2021-06-25 | 2 | 25% | 16.5d | 49.88d |  |  |  | 8h | 8h |
| 6 | 3.1 | 协议确认 |  | 1d | 2021-05-26 A | 2021-05-27 A | 4 | 100% |  |  |  |  | 协议文档 | 8h | 8h |
| 7 | 3.2 | 框架设计 |  | 3d | 2021-06-22 | 2021-06-25 |  |  |  | 48.88d | 0d | start no earlier than 2021-06-22 |  |  |  |
| 8 | 4 | **功能开发** |  | 26d | 2021-06-25 | 2021-08-02 | 7 |  |  | 49.88d |  |  | 原理图 | 424h |  |
| 9 | 4.1 | 温度采集功能 |  | 1d | 2021-06-25 | 2021-06-28 | 7 |  |  | 48.88d | 0d |  |  |  |  |
| 10 | 4.2 | 电池电压读取 |  | 0.5d | 2021-06-28 | 2021-06-28 | 9 |  |  | 49.88d | 0d |  |  |  |  |
| 11 | 4.3 | 看门狗 |  | 0.5d | 2021-06-28 | 2021-06-29 | 10 |  |  | 49.88d | 0d |  |  |  |  |
| 12 | 4.4 | **lora模组通信控制** |  | 9d | 2021-06-29 | 2021-07-12 |  |  |  | 49.88d |  |  | 板子; 网关; 其他工具 | 216h |  |
| 13 | 4.4.1 | 模组通信及设置 |  | 3d | 2021-06-29 | 2021-07-02 | 11 |  |  | 49.88d | 0d |  |  |  |  |
| 14 | 4.4.2 | 定时发送数据 |  | 2d | 2021-07-02 | 2021-07-06 | 13 |  |  | 49.88d | 0d |  |  |  |  |
| 15 | 4.4.3 | 远程设置参数 |  | 1d | 2021-07-06 | 2021-07-07 | 14 |  |  | 49.88d | 0d |  |  |  |  |
| 16 | 4.4.4 | 断网续传 |  | 1d | 2021-07-07 | 2021-07-08 | 15 |  |  | 49.88d | 0d |  |  |  |  |
| 17 | 4.4.5 | 远程标定 |  | 1d | 2021-07-08 | 2021-07-09 | 16 |  |  | 49.88d | 0d |  |  |  |  |
| 18 | 4.4.6 | 错时发送 |  | 1d | 2021-07-09 | 2021-07-12 | 17 |  |  | 49.88d | 0d |  |  |  |  |
| 19 | 4.5 | **低功耗实现** |  | 5d | 2021-07-12 | 2021-07-19 |  |  |  | 49.88d |  |  |  |  |  |
| 20 | 4.5.1 | MCU、Lora、Flash进入低功耗 |  | 2d | 2021-07-12 | 2021-07-14 | 18 |  |  | 49.88d | 0d |  |  |  |  |
| 21 | 4.5.2 | MCU、Lora、Flash出低功耗 |  | 2d | 2021-07-14 | 2021-07-16 | 20 |  |  | 49.88d | 0d |  |  |  |  |
| 22 | 4.5.3 | 系统整体低功耗优化 |  | 1d | 2021-07-16 | 2021-07-19 | 21 |  |  | 49.88d | 0d |  |  |  |  |
| 23 | 4.6 | **远程升级** |  | 6d | 2021-07-19 | 2021-07-27 |  |  |  | 49.88d |  |  |  |  |  |
| 24 | 4.6.1 | flash读写功能 |  | 1d | 2021-07-19 | 2021-07-20 | 22 |  |  | 49.88d | 0d |  |  |  |  |
| 25 | 4.6.2 | 本地保存600条数据 |  | 2d | 2021-07-20 | 2021-07-22 | 24 |  |  | 49.88d | 0d |  |  |  |  |
| 26 | 4.6.3 | 远程升级实现 |  | 3d | 2021-07-22 | 2021-07-27 | 25 |  |  | 49.88d | 0d |  |  |  |  |

Notes:
- 6: 属于持续完善

| ID | WBS | Task | Duration | Start | Finish | Predecessors | Total slack | Free slack | Resources | Work |
| --- | --- | --- | --- | --- | --- | --- | --- | --- | --- | --- |
| 27 | 4.7 | **串口打印数据** | 4d | 2021-07-27 | 2021-08-02 |  | 49.88d |  |  |  |
| 28 | 4.7.1 | 串口功能实现 | 1d | 2021-07-27 | 2021-07-28 | 26 | 49.88d | 0d |  |  |
| 29 | 4.7.2 | 串口打印数据 | 1d | 2021-07-28 | 2021-07-29 | 28 | 49.88d | 0d |  |  |
| 30 | 4.7.3 | 串口设置参数 | 1d | 2021-07-29 | 2021-07-30 | 29 | 49.88d | 0d |  |  |
| 31 | 4.7.4 | 串口标定 | 1d | 2021-07-30 | 2021-08-02 | 30 | 49.88d | 0d |  |  |
| 32 | 5 | **软硬件联调** | 12d | 2021-08-02 | 2021-08-18 |  | 49.88d | 0d | 板子; 网关; 其他工具 | 288h |
| 33 | 5.1 | 硬件功能调试 | 2d | 2021-08-02 | 2021-08-04 | 31 | 49.88d | 0d |  |  |
| 34 | 5.2 | 软件功能调试 | 5d | 2021-08-04 | 2021-08-11 | 33 | 49.88d | 0d |  |  |
| 35 | 5.3 | 软件完善优化 | 5d | 2021-08-11 | 2021-08-18 | 34 | 49.88d |  |  |  |
| 36 | 6 | **测试** | 1d | 2021-08-18 | 2021-08-19 | 32 | 49.88d | 0d |  |  |
| 37 | 6.1 | 集成测试 | 1d | 2021-08-18 | 2021-08-19 |  | 49.88d |  |  |  |
| 38 | 6.2 | 系统测试 | 1d | 2021-08-18 | 2021-08-19 |  | 49.88d |  |  |  |
| 39 | 7 | **资料交付** | 2d | 2021-08-19 | 2021-08-23 | 36 | 49.88d |  |  |  |
| 40 | 7.1 | 程序、代码 | 1d | 2021-08-19 | 2021-08-20 | 36 | 49.88d | 0d |  |  |
| 41 | 7.2 | 必要文档 | 1d | 2021-08-20 | 2021-08-23 | 40 | 49.88d |  |  |  |

Notes:
- 32: 会受硬件改版影响
